# Project_Gantt_Chart

How a schedule from MS Project changed from version to version. A marks actual dates.

## Version 1 (saved 2018-06-12)

Note of the change: Gantt Changes

| ID | WBS | Task | Duration | Start | Finish | Predecessors | Complete | Total float | Constraint |
| --- | --- | --- | --- | --- | --- | --- | --- | --- | --- |
| 1 | 1 | **BiFrost Project** | 35d? | 2018-05-08 A | 2018-06-25 |  | 86% |  |  |
| 2 | 1.1 | **Demo 01** | 6d? | 2018-05-08 A | 2018-05-15 A |  | 100% |  |  |
| 3 |  | Create Project Charter | 6d? | 2018-05-08 A | 2018-05-15 A |  | 100% |  | start no earlier than 2018-05-08 |
| 4 | 1.1.2 | **BRD Sec 1-4** | 1d? | 2018-05-08 A | 2018-05-08 A |  | 100% |  |  |
| 5 |  | Sec 1 | 1d? | 2018-05-08 A | 2018-05-08 A |  | 100% |  |  |
| 6 |  | Sec 2 | 1d? | 2018-05-08 A | 2018-05-08 A |  | 100% |  |  |
| 7 |  | Sec 3 | 1d? | 2018-05-08 A | 2018-05-08 A |  | 100% |  |  |
| 8 |  | Sec 4 | 1d? | 2018-05-08 A | 2018-05-08 A |  | 100% |  |  |
| 9 |  | BRD Complete | 0d | 2018-05-15 A | 2018-05-15 A |  | 100% |  | finish no earlier than 2018-05-15 |
| 10 |  | Create Gantt Chart | 6d? | 2018-05-08 A | 2018-05-15 A |  | 100% |  | finish no earlier than 2018-05-15 |
| 11 |  | Weekly Task Report | 2d? | 2018-05-14 A | 2018-05-15 A |  | 100% |  | start no earlier than 2018-05-14 |
| 12 |  | Demo Ready | 0d | 2018-05-15 A | 2018-05-15 A |  | 100% |  | start no earlier than 2018-05-15 |
| 13 |  | Deliverables Ready | 0d | 2018-05-15 A | 2018-05-15 A |  | 100% |  | start no earlier than 2018-05-15 |
| 15 | 1.2 | **Demo 02** | 11d? | 2018-05-08 A | 2018-05-22 A |  | 100% |  |  |
| 16 |  | BRD Sec 5 | 6d? | 2018-05-15 A | 2018-05-22 A | 4 | 100% |  | start no earlier than 2018-05-15 |
| 17 |  | BRD Sec 6 | 6d? | 2018-05-15 A | 2018-05-22 A |  | 100% |  | finish no earlier than 2018-05-22 |
| 18 |  | BRD put together | 1d? | 2018-05-08 A | 2018-05-08 A |  | 100% |  |  |
| 19 |  | Git Repository Report | 6d? | 2018-05-15 A | 2018-05-22 A |  | 100% |  | start no earlier than 2018-05-15 |
| 20 | 1.2.5 | **Build DB** | 6d? | 2018-05-15 A | 2018-05-22 A |  | 100% |  |  |
| 21 |  | Table Normalization | 1d? | 2018-05-15 A | 2018-05-15 A |  | 100% |  | start no earlier than 2018-05-15 |
| 22 |  | Create Tables | 6d? | 2018-05-15 A | 2018-05-22 A |  | 100% |  | start no earlier than 2018-05-15 |
| 23 |  | Populate Tables | 6d? | 2018-05-15 A | 2018-05-22 A |  | 100% |  | start no earlier than 2018-05-15 |
| 24 |  | DB Complete | 6d | 2018-05-15 A | 2018-05-22 A |  | 100% |  | finish no earlier than 2018-05-22 |
| 25 |  | Continue Gantt Chart | 3d? | 2018-05-18 A | 2018-05-22 A |  | 100% |  | finish no earlier than 2018-05-22 |
| 26 |  | Weekly Task Report | 3d? | 2018-05-18 A | 2018-05-22 A |  | 100% |  | start no earlier than 2018-05-18 |
| 27 |  | Deliverables Ready | 0d | 2018-05-22 A | 2018-05-22 A |  | 100% |  | start no earlier than 2018-05-22 |
| 28 |  | Demo Ready | 0d | 2018-05-22 A | 2018-05-22 A |  | 100% |  | start no earlier than 2018-05-22 |
| 32 | 1.3 | **Demo 03** | 16d? | 2018-05-08 A | 2018-05-29 A | 28 | 100% |  |  |
| 33 |  | Meaningful Data in Database | 1d | 2018-05-22 A | 2018-05-22 A |  | 100% |  |  |
| 34 |  | Connect website to database | 1d | 2018-05-22 A | 2018-05-22 A |  | 100% |  |  |
| 35 |  | Template HTML/CSS working | 1d | 2018-05-22 A | 2018-05-22 A |  | 100% |  |  |
| 36 | 1.3.4 | **Client can add products to webpage** | 3d | 2018-05-23 A | 2018-05-25 A |  | 100% |  |  |
| 37 |  | Client upload page HTML/CSS complete | 1d | 2018-05-23 A | 2018-05-23 A | 35 | 100% |  |  |
| 38 |  | Client upload page working (no admin authenication) | 2d | 2018-05-24 A | 2018-05-25 A | 37, 34 | 100% |  |  |
| 39 | 1.3.5 | **Main products page working** | 2d | 2018-05-22 A | 2018-05-23 A |  | 100% |  |  |
| 40 |  | HTML/CSS products page complete | 2d | 2018-05-22 A | 2018-05-23 A |  | 100% |  |  |
| 41 |  | Products page can load from the database | 1d | 2018-05-23 A | 2018-05-23 A | 33, 34 | 100% |  |  |
| 42 |  | Products can be organized by category | 1d | 2018-05-22 A | 2018-05-22 A |  | 100% |  |  |
| 43 | 1.3.6 | **Tune/Update database** | 1d? | 2018-05-08 A | 2018-05-08 A |  | 100% |  |  |
| 44 |  | Add tables for genres/consoles | 1d? | 2018-05-08 A | 2018-05-08 A |  | 100% |  |  |
| 45 |  | Update table names & types | 1d? | 2018-05-08 A | 2018-05-08 A |  | 100% |  |  |
| 46 |  | Continue Gantt Chart | 6d? | 2018-05-22 A | 2018-05-29 A |  | 100% |  | finish no earlier than 2018-05-29 |
| 47 |  | Weekly Task Report | 6d? | 2018-05-22 A | 2018-05-29 A |  | 100% |  | finish no earlier than 2018-05-29 |
| 48 |  | HTML/CSS Header Template Complete | 0d | 2018-05-29 A | 2018-05-29 A |  | 100% |  | finish no earlier than 2018-05-29 |
| 49 |  | “Add Products” Page Working | 0d | 2018-05-29 A | 2018-05-29 A |  | 100% |  | finish no earlier than 2018-05-29 |
| 50 |  | Main Product Display Page Working | 0d | 2018-05-29 A | 2018-05-29 A |  | 100% |  | finish no earlier than 2018-05-29 |
| 53 | 1.4 | **Demo 04** | 6d | 2018-05-29 A | 2018-06-05 |  | 89% |  |  |
| 54 | 1.4.1 | **Sign-in** | 3d | 2018-05-29 A | 2018-05-31 A |  | 100% |  |  |
| 55 |  | Sign-up Template | 1d | 2018-05-29 A | 2018-05-29 A |  | 100% |  |  |
| 56 |  | Sign-in Template | 1d | 2018-05-29 A | 2018-05-29 A |  | 100% |  |  |
| 57 |  | Account Sign-up Available | 1d | 2018-05-30 A | 2018-05-31 A | 55 | 100% |  | finish no earlier than 2018-06-04 |
| 58 |  | Users Can Sign-in to Their Account (Including Admin Accounts) | 1d | 2018-05-31 A | 2018-05-31 A | 56 | 100% |  | finish no earlier than 2018-05-31 |
| 59 | 1.4.2 | **Cart** | 6d? | 2018-05-29 A | 2018-06-05 |  | 82% | 0d |  |
| 60 |  | Shopping Cart Template/Styling | 6d | 2018-05-29 A | 2018-06-05 |  | 75% | 0d | finish no earlier than 2018-06-05 |
| 61 |  | Users Can Add/View Products in Their Shopping Cart | 1d | 2018-05-30 A | 2018-05-30 A | 60 | 100% |  | finish no earlier than 2018-06-04 |
| 62 |  | Users Can remove Items In Their Shopping Cart | 1d | 2018-05-31 A | 2018-05-31 A | 60 | 100% |  | finish no earlier than 2018-06-01 |
| 63 |  | Users can change the quantity of products in their shopping cart | 1d? | 2018-06-01 A | 2018-06-01 A |  | 100% |  |  |
| 64 |  | Cart is persistant between sessions | 2d | 2018-06-02 A | 2018-06-05 |  | 75% | 0d | finish no earlier than 2018-06-05 |
| 65 |  | Deliverables Ready | 3d | 2018-05-31 A | 2018-06-05 A |  | 100% |  |  |
| 66 |  | Demo Ready | 0d | 2018-06-05 A | 2018-06-05 A |  | 100% |  | start no earlier than 2018-06-05 |
| 67 |  | Users Can Create an Account and Sign-in (Including Admin Accounts) | 0d | 2018-05-31 A | 2018-05-31 A |  | 100% |  | finish no earlier than 2018-06-05 |
| 68 |  | Users Can Add Products to Cart and View Them | 0d | 2018-05-31 A | 2018-05-31 A |  | 100% |  | finish no earlier than 2018-06-05 |
| 69 |  | Customer Can Remove/Edit Products In Their Cart | 0d | 2018-06-01 A | 2018-06-01 A |  | 100% |  | finish no earlier than 2018-06-05 |
| 70 |  | Contents of Shopping Carts Persist Across Sessions and Devices | 0d | 2018-06-01 A | 2018-06-01 A |  | 100% |  |  |
| 72 | 1.5 | **Demo 05** | 6d | 2018-06-05 | 2018-06-12 A |  | 100% |  |  |
| 73 | 1.5.1 | **Checkout/Billing Info** | 6d | 2018-06-05 A | 2018-06-12 |  | 100% |  |  |
| 74 |  | Template | 1d | 2018-06-05 A | 2018-06-05 A |  | 100% |  |  |
| 75 |  | Checkout Process | 2d | 2018-06-05 A | 2018-06-06 A |  | 100% |  |  |
| 76 |  | Stripe | 2d | 2018-06-06 A | 2018-06-07 A |  | 100% |  |  |
| 77 |  | Terms of Service Req | 2d | 2018-06-05 A | 2018-06-06 A |  | 100% |  |  |

| ID | WBS | Task | Duration | Start | Finish | Complete | Total float | Constraint |
| --- | --- | --- | --- | --- | --- | --- | --- | --- |
| 78 |  | Edit Cart Quantity | 1d | 2018-05-08 A | 2018-05-08 A | 100% |  |  |
| 79 |  | Remove/Clear Cart | 1d | 2018-05-08 A | 2018-05-08 A | 100% |  |  |
| 80 |  | BRD update | 1d | 2018-05-08 A | 2018-05-08 A | 100% |  |  |
| 81 |  | Weekly Task Report | 6d | 2018-06-05 A | 2018-06-12 A | 100% |  | finish no earlier than 2018-06-12 |
| 82 |  | Deliverables Ready | 0d | 2018-06-12 A | 2018-06-12 A | 100% |  |  |
| 83 |  | Demo Ready | 0d | 2018-06-12 A | 2018-06-12 A | 100% |  | start no earlier than 2018-06-12 |
| 84 |  | The Online payment occurs at Checkout | 0d | 2018-06-12 A | 2018-06-12 A | 100% |  |  |
| 87 | 1.6 | **Demo 06** | 6d | 2018-06-12 | 2018-06-19 |  |  |  |
| 88 | 1.6.1 | **Orders and Billing** | 3d | 2018-06-12 | 2018-06-14 |  |  |  |
| 89 |  | Billing and Order info writes to text | 3d | 2018-06-12 | 2018-06-14 |  | 0d |  |
| 90 |  | Display previous orders to page | 3d | 2018-06-12 | 2018-06-14 |  | 0d |  |
| 91 |  | Reciept Table Creation | 2d | 2018-06-12 | 2018-06-13 |  | 1d |  |
| 92 |  | Final adjustments to CSS | 1d | 2018-06-12 | 2018-06-12 |  | 5d |  |
| 94 |  | Weekly Task Report | 1d | 2018-06-12 | 2018-06-12 |  | 5d |  |
| 95 |  | Deliverables Ready | 0d | 2018-06-19 | 2018-06-19 |  | 5d | start no earlier than 2018-06-19 |
| 96 |  | Demo Ready | 0d | 2018-06-19 | 2018-06-19 |  | 5d | start no earlier than 2018-06-19 |
| 97 |  | Create a file containing the order information | 0d | 2018-06-19 | 2018-06-19 |  | 5d | start no earlier than 2018-06-19 |
| 98 |  | Customers can view Order History | 0d | 2018-06-19 | 2018-06-19 |  | 5d | start no earlier than 2018-06-19 |
| 99 |  | Website has consistant look and feel | 0d | 2018-06-19 | 2018-06-19 |  | 5d | start no earlier than 2018-06-19 |
| 102 | 1.7 | **Final Presentation** | 5d | 2018-06-19 | 2018-06-25 |  |  |  |
| 103 |  | Presentation Power Point | 1d? | 2018-06-19 | 2018-06-19 |  | 4d |  |
| 104 | 1.7.2 | **Final Report** | 1d? | 2018-06-19 | 2018-06-19 |  | 4d |  |
| 105 |  | Project Specifications | 1d? | 2018-06-19 | 2018-06-19 |  | 4d |  |
| 106 |  | Usability Guide | 1d? | 2018-06-19 | 2018-06-19 |  | 4d |  |
| 107 |  | Problems and Challenges | 1d? | 2018-06-19 | 2018-06-19 |  | 4d |  |
| 108 |  | Lessons Learned | 1d? | 2018-06-19 | 2018-06-19 |  | 4d |  |
| 109 |  | WWYD Differently | 1d? | 2018-06-19 | 2018-06-19 |  | 4d |  |
| 110 |  | Sample Code | 1d? | 2018-06-19 | 2018-06-19 |  | 4d |  |
| 111 |  | Peer Reviews | 1d? | 2018-06-19 | 2018-06-19 |  | 4d |  |
| 113 |  | Final Demo | 0d | 2018-06-25 | 2018-06-25 |  | 0d | finish no earlier than 2018-06-25 |

## Version 2 (saved 2018-06-18)

Note of the change: Merge branch 'InitBranch' into 'master'

Last finish stays 2018-06-25. Complete tasks 61 → 73.

Changed:

| ID | Task | Start | Finish | Duration | Complete | Total float | Other |
| --- | --- | --- | --- | --- | --- | --- | --- |
| 1 | **BiFrost Project** |  |  |  | 86% → 94% |  |  |
| 53 | **Demo 04** |  | 2018-06-05 A |  | 89% → 100% |  |  |
| 59 | **Cart** |  | 2018-06-05 A |  | 82% → 100% | 0d → none | resources Curtis (TL); Illia; Pat → Curtis (TL); Pat |
| 60 | Shopping Cart Template/Styling |  | 2018-06-05 A |  | 75% → 100% | 0d → none |  |
| 64 | Cart is persistant between sessions |  | 2018-06-05 A |  | 75% → 100% | 0d → none |  |
| 87 | **Demo 06** | 2018-06-12 A | 2018-06-19 A |  | 0% → 100% |  |  |
| 88 | **Orders and Billing** | 2018-06-12 A | 2018-06-14 A |  | 0% → 100% |  |  |
| 89 | Billing and Order info writes to html | 2018-06-12 A | 2018-06-14 A |  | 0% → 100% | 0d → none | was named Billing and Order info writes to text |
| 90 | Display previous orders to page | 2018-06-12 A | 2018-06-14 A |  | 0% → 100% | 0d → none |  |
| 91 | Reciept Table Creation | 2018-06-12 A | 2018-06-13 A |  | 0% → 100% | 1d → none |  |
| 92 | Final adjustments to CSS | 2018-06-12 A | 2018-06-12 A |  | 0% → 100% | 5d → none |  |
| 94 | Weekly Task Report | 2018-06-12 A | 2018-06-12 A |  | 0% → 100% | 5d → none |  |
| 95 | Deliverables Ready | 2018-06-19 A | 2018-06-19 A |  | 0% → 100% | 5d → none |  |
| 96 | Demo Ready | 2018-06-19 A | 2018-06-19 A |  | 0% → 100% | 5d → none |  |
| 97 | Create an HTML file containing the order information | 2018-06-19 A | 2018-06-19 A |  | 0% → 100% | 5d → none | was named Create a file containing the order information |
| 98 | Customers can view Order History | 2018-06-19 A | 2018-06-19 A |  | 0% → 100% | 5d → none |  |
| 99 | Website has consistant look and feel | 2018-06-19 A | 2018-06-19 A |  | 0% → 100% | 5d → none |  |
| 103 | Presentation Power Point |  |  |  |  |  | resources none → Devan; Evan |
| 104 | **Final Report** |  | 2018-06-19 → 2018-06-25 (+6d) | 1d? → 5d |  | 4d → none | resources none → Devan; Evan; Pat(TL); Curtis |
| 111 | Peer Reviews |  |  |  |  |  | resources none → Curtis; Devan; Evan; Pat(TL) |
